# Legyen_on_is_milliomos

Schedule from MS Project, 2019-02-18 to 2019-05-05, status date 2019-05-03, costs in Ft, A marks actual dates.

## Calendars

- Szabványos: Mon-Fri 08:00-12:00, 13:00-17:00; Sat-Sun off.

## Resources

| Resource | Rate | Cost per use |
| --- | --- | --- |
| Bajnok Tamás | 4687.5 |  |
| Nagy Ádám | 4687.5 |  |
| Szabó Attila | 4062.5 |  |
| Tóth Tamás | 4062.5 |  |
| Varsa László | 4687.5 |  |
| Apple Fejlesztői díj |  | 27000 |
| Számítógépek |  | 650000 |
| Hálózati eszközök |  | 60000 |

## Schedule

| ID | WBS | Task | Type | Duration | Start | Finish | Predecessors | Complete | Baseline start | Baseline finish | Baseline duration | Constraint | Deadline | Resources | Work | Actual work | Cost | Baseline cost | Actual cost |
| --- | --- | --- | --- | --- | --- | --- | --- | --- | --- | --- | --- | --- | --- | --- | --- | --- | --- | --- | --- |
| 1 | 1 | **Tervezés** |  | 16d | 2019-02-18 A | 2019-03-11 A |  | 100% |  |  |  |  |  |  | 168h | 168h | 757,500 |  | 757,500 |
| 2 | 1.1 | Csapat szervezés |  | 8d | 2019-02-18 A | 2019-02-27 A |  | 100% | 2019-02-18 | 2019-02-27 | 8d |  |  | Nagy Ádám [50%]; Bajnok Tamás [50%] | 64h | 64h | 300,000 | 300,000 | 300,000 |
| 3 | 1.2 | Feladat kiosztás |  | 1d | 2019-02-18 A | 2019-02-18 A |  | 100% | 2019-02-18 | 2019-02-18 | 1d |  |  | Nagy Ádám [50%]; Bajnok Tamás [50%] | 8h | 8h | 37,500 | 37,500 | 37,500 |
| 4 | 1.3 | Feladatok kiosztása – Elkészül | milestone | 0d | 2019-03-03 A | 2019-03-03 A | 2, 3 | 100% | 2019-03-03 | 2019-03-03 | 0d | finish no earlier than 2019-03-03 |  |  |  |  |  |  |  |
| 5 | 1.4 | Adatbázis modell elkészítése |  | 2d | 2019-03-04 A | 2019-03-05 A | 4 | 100% | 2019-03-04 | 2019-03-05 | 2d |  |  | Bajnok Tamás | 16h | 16h | 75,000 | 75,000 | 75,000 |
| 6 | 1.5 | Reláció sémák létrehozása |  | 2d | 2019-03-04 A | 2019-03-05 A | 5SS | 100% | 2019-03-04 | 2019-03-05 | 2d |  |  | Tóth Tamás | 16h | 16h | 65,000 | 65,000 | 65,000 |
| 7 | 1.6 | Adatbázis tervezés |  | 4d | 2019-03-06 A | 2019-03-11 A | 6 | 100% | 2019-03-06 | 2019-03-11 | 4d |  |  | Bajnok Tamás; Tóth Tamás | 64h | 64h | 280,000 | 280,000 | 280,000 |
| 8 | 1.7 | Adatbázis megtervezése – Elkészül | milestone | 0d | 2019-03-11 A | 2019-03-11 A | 7 | 100% | 2019-03-11 | 2019-03-11 | 0d | finish no earlier than 2019-03-10 |  |  |  |  |  |  |  |
| 9 | 2 | **Alkalmazás fejlesztése** |  | 35d | 2019-03-04 A | 2019-04-21 A |  | 100% |  |  |  |  |  |  | 400h | 400h | 1,825,000 |  | 1,825,000 |
| 10 | 2.1 | **Backend** |  | 15d | 2019-03-04 A | 2019-03-24 A |  | 100% |  |  |  |  |  |  | 160h | 160h | 725,000 |  | 725,000 |
| 11 | 2.1.1 | PHP szerver telepítése, üzemben tartása |  | 5d | 2019-03-12 A | 2019-03-18 A | 8 | 100% | 2019-03-12 | 2019-03-18 | 5d |  |  | Bajnok Tamás | 40h | 40h | 187,500 | 187,500 | 187,500 |
| 12 | 2.1.2 | Szerver felállítása – Elkészül | milestone | 0d | 2019-03-18 A | 2019-03-18 A | 11 | 100% | 2019-03-18 | 2019-03-18 | 0d | finish no earlier than 2019-03-17 |  |  |  |  |  |  |  |
| 13 | 2.1.3 | Felhasználói felület tervezése |  | 10d | 2019-03-04 A | 2019-03-15 A | 4 | 100% | 2019-03-04 | 2019-03-15 | 10d |  |  | Varsa László | 80h | 80h | 375,000 | 375,000 | 375,000 |
| 14 | 2.1.4 | Felhasználói felület megtervezése – Elkészül | milestone | 0d | 2019-03-17 A | 2019-03-17 A | 13 | 100% | 2019-03-17 | 2019-03-17 | 0d | finish no earlier than 2019-03-17 |  |  |  |  |  |  |  |
| 15 | 2.1.5 | Backend kialakítása PHP-val |  | 5d | 2019-03-18 A | 2019-03-22 A | 14 | 100% | 2019-03-18 | 2019-03-22 | 5d |  |  | Tóth Tamás | 40h | 40h | 162,500 | 162,500 | 162,500 |
| 16 | 2.1.6 | Backend létrehozása – Elkészül | milestone | 0d | 2019-03-24 A | 2019-03-24 A | 15 | 100% | 2019-03-24 | 2019-03-24 | 0d | finish no earlier than 2019-03-24 |  |  |  |  |  |  |  |
| 17 | 2.2 | **Frontend** |  | 25d | 2019-03-18 A | 2019-04-21 A |  | 100% |  |  |  |  |  |  | 240h | 240h | 1,100,000 |  | 1,100,000 |
| 18 | 2.2.1 | Frontend kialakítása HTML, CSS és JavaScript felhasználásával |  | 5d | 2019-03-18 A | 2019-03-22 A | 15SS | 100% | 2019-03-18 | 2019-03-22 | 5d |  |  | Nagy Ádám; Szabó Attila | 80h | 80h | 350,000 | 350,000 | 350,000 |
| 19 | 2.2.2 | Frontend létrehozása –Elkészül | milestone | 0d | 2019-03-24 A | 2019-03-24 A | 18 | 100% | 2019-03-24 | 2019-03-24 | 0d | finish no earlier than 2019-03-24 |  |  |  |  |  |  |  |
| 20 | 2.2.3 | Alkalmazás alfa verzió megjelenése – Megtörténik | milestone | 0d | 2019-03-24 A | 2019-03-24 A | 18, 14 | 100% | 2019-03-24 | 2019-03-24 | 0d | finish no earlier than 2019-03-24 |  |  |  |  |  |  |  |
| 21 | 2.2.4 | Grafikus felület kialakítása |  | 20d | 2019-03-25 A | 2019-04-19 A | 19, 20 | 100% | 2019-03-25 | 2019-04-19 | 20d |  |  | Varsa László | 160h | 160h | 750,000 | 750,000 | 750,000 |
| 22 | 2.2.5 | GUI kialakítása – 2019.04.21 | milestone | 0d | 2019-04-21 A | 2019-04-21 A | 21 | 100% | 2019-04-21 | 2019-04-21 | 0d | finish no earlier than 2019-04-21 |  |  |  |  |  |  |  |
| 23 | 3 | **Véglegesítés** |  | 30d | 2019-03-25 A | 2019-05-05 A |  | 100% |  |  |  |  |  |  | 248h | 248h | 1,097,500 |  | 1,097,500 |
| 24 | 3.1 | Adatbázis feltöltése |  | 5d | 2019-03-25 A | 2019-03-29 A | 4, 18 | 100% | 2019-03-25 | 2019-03-29 | 5d |  |  | Szabó Attila; Nagy Ádám | 80h | 80h | 350,000 | 350,000 | 350,000 |
| 25 | 3.2 | Alkalmazás béta verzió megjelenése – 2019.04.14 | milestone | 0d | 2019-04-14 A | 2019-04-14 A | 24 | 100% | 2019-04-14 | 2019-04-14 | 0d | finish no earlier than 2019-04-14 |  |  |  |  |  |  |  |
| 26 | 3.3 | Tesztelés hibák javítása |  | 10d | 2019-04-15 A | 2019-04-26 A | 25 | 100% | 2019-04-15 | 2019-04-26 | 10d |  |  | Bajnok Tamás [50%]; Nagy Ádám [50%]; Tóth Tamás [50%] | 120h | 120h | 537,500 | 537,500 | 537,500 |
| 27 | 3.4 | Végleges alkalmazás megjelenése – 2019.04.28 | milestone | 0d | 2019-04-28 A | 2019-04-28 A | 26 | 100% | 2019-04-28 | 2019-04-28 | 0d | finish no earlier than 2019-04-28 |  |  |  |  |  |  |  |
| 28 | 3.5 | Részletes dokumentáció |  | 3d | 2019-05-01 A | 2019-05-03 A |  | 100% | 2019-05-01 | 2019-05-06 | 4d | start no earlier than 2019-05-01 |  | Nagy Ádám; Szabó Attila | 48h | 48h | 210,000 | 280,000 | 210,000 |
| 29 | 3.6 | Dokumentáció átadása - Megtörténik | milestone | 0d | 2019-05-05 A | 2019-05-05 A | 28 | 100% | 2019-05-06 | 2019-05-06 | 0d | finish no earlier than 2019-05-05 | 2019-05-05 |  |  |  |  |  |  |
